# BC+IA - Gantt de Implementación

Schedule from MS Project, 2025-12-19 to 2026-05-08, A marks actual dates.
Microsoft

## Calendars

- Calendario Macro: Mon-Fri 09:00-13:00, 15:00-19:00; Sat-Sun off. Exceptions (off unless hours are given): 2025-12-24 (Nochebuena), 2025-12-25 (Navidad), 2025-12-31 (Nochevieja), 2026-01-01 (Año nuevo), 2026-02-16 to 2026-02-17 (Carnaval), 2026-03-23 (Puente turístico no laborable), 2026-03-24 (Día Nacional de la Memoria por la Verdad y la Justicia), 2026-04-02 (Día del Veterano y de los Caídos en la Guerra de Malvinas), 2026-04-03 (Viernes Santo), 2026-05-01 (Día del Trabajador).

## Schedule

| ID | WBS | Task | Type | Duration | Start | Finish | Predecessors | Complete | Remaining | Total slack | Free slack |
| --- | --- | --- | --- | --- | --- | --- | --- | --- | --- | --- | --- |
| 1 | 1 | **BC+IA - Gantt de implementación** |  | 90d | 2025-12-19 A | 2026-05-08 |  | 16% | 75.75d | 0d |  |
| 2 | 1.1 | H1 - Inicio de Etapa de Preparación Inicial | milestone | 0d | 2025-12-19 A | 2025-12-19 A |  | 100% |  |  |  |
| 3 | 1.2 | **Etapa de Preparación Inicial** |  | 7d | 2025-12-19 A | 2026-01-02 A |  | 100% |  |  |  |
| 4 | 1.2.1 | Kick off |  | 1d | 2025-12-19 A | 2025-12-19 A | 2 | 100% |  |  |  |
| 5 | 1.2.2 | Planificación detallada BC+IA |  | 6d | 2025-12-22 A | 2026-01-02 A | 4 | 100% |  |  |  |
| 6 | 1.3 | H2 - Fin Etapa de Preparación Inicial | milestone | 0d | 2026-01-02 A | 2026-01-02 A | 5 | 100% |  |  |  |
| 7 | 1.4 | **Etapa de Business Blueprint** |  | 30d | 2026-01-05 A | 2026-02-13 A |  | 100% |  |  |  |
| 8 | 1.4.1 | Sesiones de relevamiento |  | 11d | 2026-01-05 A | 2026-01-19 A | 6 | 100% |  |  |  |
| 9 | 1.4.2 | Redacción de BBP BC+IA |  | 14d | 2026-01-20 A | 2026-02-06 A | 8 | 100% |  |  |  |
| 10 | 1.4.3 | Validación de BBP con key users |  | 5d | 2026-02-09 A | 2026-02-13 A | 9 | 100% |  |  |  |
| 11 | 1.5 | H3 - Fin Etapa de Business Blueprint | milestone | 0d | 2026-02-13 A | 2026-02-13 A | 10 | 100% |  |  |  |
| 12 | 1.6 | **Etapa de Conexión** |  | 8d | 2026-02-18 A | 2026-02-27 |  | 92% | 0.67d | 38d |  |
| 13 | 1.6.1 | Creación de Infraestructura en Google Cloud |  | 3d | 2026-02-18 A | 2026-02-20 A | 11 | 100% |  |  |  |
| 14 | 1.6.2 | **Instalación de servidores xECM** |  | 8d | 2026-02-18 A | 2026-02-27 |  | 86% | 1.09d | 8d | 0d |
| 15 | 1.6.2.1 | Base de datos (SQL Server) |  | 3d | 2026-02-18 A | 2026-02-20 A | 11 | 100% |  |  |  |
| 16 | 1.6.2.2 | Archive Center |  | 2d | 2026-02-23 A | 2026-02-24 A | 15 | 100% |  |  |  |
| 17 | 1.6.2.3 | Backend Content Server |  | 3d | 2026-02-25 A | 2026-02-27 A | 16 | 100% |  |  |  |
| 18 | 1.6.2.4 | Frontend Content Server |  | 3d | 2026-02-25 A | 2026-02-27 | 16 | 50% | 1.5d | 8d |  |
| 19 | 1.6.3 | **Instalación de servidores IA** |  | 2d | 2026-02-23 A | 2026-02-24 A |  | 100% |  |  |  |
| 20 | 1.6.3.1 | Instalación Airflow + Langfuse |  | 2d | 2026-02-23 A | 2026-02-24 A | 13 | 100% |  |  |  |
| 21 | 1.6.3.2 | Instalación VectorDB + Platform DB |  | 1d | 2026-02-23 A | 2026-02-23 A | 13 | 100% |  |  |  |
| 22 | 1.6.3.3 | Instalación IA Platform |  | 1d | 2026-02-24 A | 2026-02-24 A | 21 | 100% |  |  |  |
| 23 | 1.6.4 | H4 - Fin Etapa de Conexión | milestone | 0d | 2026-02-27 | 2026-02-27 | 14, 19 |  |  | 41d | 0d |
| 24 | 1.7 | **Etapa de Realización** |  | 35d | 2026-02-18 | 2026-04-13 |  |  |  | 7d |  |
| 25 | 1.7.1 | **Configuración inicial** |  | 9d | 2026-03-02 | 2026-03-12 |  |  |  | 8d |  |
| 26 | 1.7.1.1 | Archive Center |  | 2d | 2026-03-02 | 2026-03-03 | 14 |  |  | 46d |  |
| 27 | 1.7.1.2 | OTDS |  | 2d | 2026-03-02 | 2026-03-03 | 14 |  |  | 8d | 0d |
| 28 | 1.7.1.3 | xECM |  | 4d | 2026-03-04 | 2026-03-09 | 27 |  |  | 8d | 0d |

Notes:
- 13: Subtareas involucradas: / 1. Creación de tenant Macro / 2. Redes y seguridad / 3. Creación y asignación de roles / 4. Creación proyectos xECM+IA / 5. Creación de máquinas virtuales xECM / 6. Creación cluster IA / 7. Creación de túnel IAP / 8. Creación de conexión RDP

| ID | WBS | Task | Duration | Start | Finish | Predecessors | Total slack | Free slack |
| --- | --- | --- | --- | --- | --- | --- | --- | --- |
| 29 | 1.7.1.4 | **Conexión Directorio Activo** | 9d | 2026-03-02 | 2026-03-12 |  | 36d |  |
| 30 | 1.7.1.4.1 | Creación de usuario de conexión (Macro) | 1d | 2026-03-02 | 2026-03-02 | 23 | 42d | 0d |
| 31 | 1.7.1.4.2 | Creación de grupo en Directorio Activo (Macro) | 1d | 2026-03-03 | 2026-03-03 | 30 | 42d | 0d |
| 32 | 1.7.1.4.3 | Suministro de datos a ITMind (Macro) | 1d | 2026-03-04 | 2026-03-04 | 31 | 42d | 3d |
| 33 | 1.7.1.4.4 | Conexión Directorio Activo | 3d | 2026-03-10 | 2026-03-12 | 28, 32 | 39d |  |
| 34 | 1.7.2 | **Configuración xECM** | 25d | 2026-02-18 | 2026-03-26 |  | 7d | 0d |
| 35 | 1.7.2.1 | **Estructura de carpetas** | 15d | 2026-02-18 | 2026-03-10 |  | 8d | 0d |
| 36 | 1.7.2.1.1 | Entrega de la estructura de carpetas final (Macro) | 14d | 2026-02-18 | 2026-03-09 | 11 | 8d | 0d |
| 37 | 1.7.2.1.2 | Configuración de estructura de carpetas | 1d | 2026-03-10 | 2026-03-10 | 36, 28 | 8d |  |
| 38 | 1.7.2.2 | **Categorías OT** | 16d | 2026-02-18 | 2026-03-11 |  | 16d |  |
| 39 | 1.7.2.2.1 | Entrega de Categorías OT finales (Macro) | 15d | 2026-02-18 | 2026-03-10 | 11 | 10d |  |
| 40 | 1.7.2.2.2 | Configuración Categorías OT | 1d | 2026-03-11 | 2026-03-11 | 35 | 8d | 0d |
| 41 | 1.7.2.3 | Zonas de negocio | 1d | 2026-03-12 | 2026-03-12 | 40 | 8d | 0d |
| 42 | 1.7.2.4 | Flujos de trabajo | 3d | 2026-03-13 | 2026-03-17 | 41 | 8d | 0d |
| 43 | 1.7.2.5 | **Roles** | 22d | 2026-02-18 | 2026-03-19 |  | 8d |  |
| 44 | 1.7.2.5.1 | Definición de listado de roles (Macro) | 20d | 2026-02-18 | 2026-03-17 | 11 | 8d | 0d |
| 45 | 1.7.2.5.2 | Configuración de Roles | 2d | 2026-03-18 | 2026-03-19 | 42, 44 | 8d | 0d |
| 46 | 1.7.2.6 | **Reportes** | 23d | 2026-02-18 | 2026-03-20 |  | 7d |  |
| 47 | 1.7.2.6.1 | Definición de reportes necesarios (Macro) | 21d | 2026-02-18 | 2026-03-18 | 11 | 7d | 0d |
| 48 | 1.7.2.6.2 | Configuración de Reportes | 2d | 2026-03-19 | 2026-03-20 | 42, 47 | 7d | 0d |
| 49 | 1.7.2.7 | Búsquedas avanzadas | 2d | 2026-03-25 | 2026-03-26 | 45, 48, 44, 47 | 7d |  |
| 50 | 1.7.2.8 | **Vistas personalizadas** | 24d | 2026-02-18 | 2026-03-25 |  | 8d |  |
| 51 | 1.7.2.8.1 | Compartir a Macro UX lista de opciones a personalizar | 13d | 2026-02-18 | 2026-03-06 | 11 | 8d | 0d |
| 52 | 1.7.2.8.2 | Enviar resultado de parámetros personalizados aITMind (Macro) | 10d | 2026-03-09 | 2026-03-20 | 51 | 8d | 0d |
| 53 | 1.7.2.8.3 | Configuración de vistas personalizadas | 1d | 2026-03-25 | 2026-03-25 | 52, 45, 48 | 8d |  |

| ID | WBS | Task | Type | Duration | Start | Finish | Predecessors | Total slack | Free slack |
| --- | --- | --- | --- | --- | --- | --- | --- | --- | --- |
| 54 | 1.7.3 | **Configuración IA DEV** |  | 16d | 2026-03-02 | 2026-03-25 |  | 29d |  |
| 55 | 1.7.3.1 | Conexión interna xECM |  | 1d | 2026-03-10 | 2026-03-10 | 28 | 41d |  |
| 56 | 1.7.3.2 | Configuración VectorDB + Platform DB |  | 2d | 2026-03-02 | 2026-03-03 | 23 | 41d | 0d |
| 57 | 1.7.3.3 | Configuración Pipeline de Documentos |  | 3d | 2026-03-04 | 2026-03-06 | 56 | 41d | 9d |
| 58 | 1.7.3.4 | Configuración Plataforma IA |  | 3d | 2026-03-04 | 2026-03-06 | 56 | 41d | 9d |
| 59 | 1.7.3.5 | Sincronización xECM Roles y Permisos - Metadata |  | 1d | 2026-03-20 | 2026-03-20 | 58, 57, 45, 40, 44 | 32d | 0d |
| 60 | 1.7.3.6 | Testing plataforma IA |  | 1d | 2026-03-25 | 2026-03-25 | 59 | 32d |  |
| 61 | 1.7.4 | **Entrenamiento IA** |  | 23d | 2026-02-18 | 2026-03-20 |  | 11d |  |
| 62 | 1.7.4.1 | Disponibilizacion de información para entrenamiento IA (Macro) |  | 1d | 2026-02-18 | 2026-02-18 | 11 | 22.88d |  |
| 63 | 1.7.4.2 | Entrenamiento y refinamiento IA |  | 18d | 2026-02-25 | 2026-03-20 | 19 | 0.88d |  |
| 64 | 1.7.5 | Pruebas DEV |  | 2d | 2026-03-27 | 2026-03-30 | 34 | 7d | 0d |
| 65 | 1.7.6 | Customizing Escenarios - IA con xECM |  | 7d | 2026-03-20 | 2026-04-01 | 45, 44 | 27d |  |
| 66 | 1.7.7 | Transporte de configuración DEV a QAS |  | 2d | 2026-03-31 | 2026-04-01 | 63, 64, 62 | 7d | 0d |
| 67 | 1.7.8 | **Pruebas QAS** |  | 35d | 2026-02-18 | 2026-04-13 |  | 7d |  |
| 68 | 1.7.8.1 | Revisar agenda de key users para capacitación |  | 1d | 2026-02-18 | 2026-02-18 | 11 | 25.88d |  |
| 69 | 1.7.8.2 | **Capacitación key users xECM** |  | 1d | 2026-04-06 | 2026-04-06 |  | 7d | 0d |
| 70 | 1.7.8.2.1 | Sesión de capacitación key users CAT |  | 1d | 2026-04-06 | 2026-04-06 | 66 | 7d |  |
| 71 | 1.7.8.2.2 | Sesión de capacitación key users RRHH |  | 1d | 2026-04-06 | 2026-04-06 | 66 | 7d |  |
| 72 | 1.7.8.3 | Disponibilización Script Pruebas QAS |  | 1d | 2026-04-06 | 2026-04-06 | 66 | 7d | 0d |
| 73 | 1.7.8.4 | **Capacitación key users IA** |  | 1d | 2026-04-06 | 2026-04-06 |  | 7d | 0d |
| 74 | 1.7.8.4.1 | Sesión de capacitación key users CAT |  | 1d | 2026-04-06 | 2026-04-06 | 66 | 7d |  |
| 75 | 1.7.8.4.2 | Sesión de capacitación key users RRHH |  | 1d | 2026-04-06 | 2026-04-06 | 66 | 7d |  |
| 76 | 1.7.8.5 | Entrega de material de soporte (funcional) Draft |  | 1d | 2026-04-07 | 2026-04-07 | 72 | 0.88d |  |
| 77 | 1.7.8.6 | Entrega de material de soporte (técnico) Draft |  | 1d | 2026-04-07 | 2026-04-07 | 72 | 0.88d |  |
| 78 | 1.7.8.7 | Pruebas QAS |  | 5d | 2026-04-07 | 2026-04-13 | 69, 73, 68, 72 | 7d | 0d |
| 79 | 1.8 | H5 - Fin Etapa de Realización | milestone | 0d | 2026-04-13 | 2026-04-13 | 78, 77, 76 | 21d |  |

Notes:
- 63: Subtareas: / 1. Pruebas A/B chunkeo. / 2. Consultas reales con respuestas esperadas. / 3. Configuración de escenarios de prueba representativos. / 4. Refinamiento respuestas. / - Ajuste de parámetro de búsqueda con documentos reales. / - Optimización de respuestas según personalidad definida. / - Validación de calidad de respuesta con escenario esperados. / - Ajustes de filtro de seguridad. / - Branding de la interfaz.

| ID | WBS | Task | Type | Duration | Start | Finish | Predecessors | Total slack | Free slack |
| --- | --- | --- | --- | --- | --- | --- | --- | --- | --- |
| 80 | 1.9 | **Migración BC** |  | 45d | 2026-02-18 | 2026-04-27 |  | 8d |  |
| 81 | 1.9.1 | Extracción de información (Macro) |  | 29d | 2026-02-18 | 2026-04-01 | 11 | 27d |  |
| 82 | 1.9.2 | **Disponibilización de información (Macro)** |  | 29d | 2026-02-18 | 2026-04-01 |  | 19d |  |
| 83 | 1.9.2.1 | Generar documentos xml / pdf |  | 28d | 2026-02-18 | 2026-03-31 | 11 | 22d | 0d |
| 84 | 1.9.2.2 | Compartirlos en algún espacio para que ITMind pueda hacer uso de ellos |  | 1d | 2026-04-01 | 2026-04-01 | 83 | 22d | 0d |
| 85 | 1.9.3 | Pruebas migratorias (Escenario Test) |  | 5d | 2026-04-06 | 2026-04-10 | 84, 83 | 22d |  |
| 86 | 1.9.4 | Migración a xECM - Definitivo PRD |  | 5d | 2026-04-21 | 2026-04-27 | 90 | 11d | 0d |
| 87 | 1.10 | H6 - Fin Migración BC | milestone | 0d | 2026-04-27 | 2026-04-27 | 86 | 11d |  |
| 88 | 1.11 | **Etapa de Preparación Final** |  | 79d | 2025-12-19 | 2026-04-22 |  | 11d |  |
| 89 | 1.11.1 | Tareas de preproducción IA |  | 5d | 2026-04-14 | 2026-04-20 | 78, 77, 76 | 16d |  |
| 90 | 1.11.2 | Tareas de cutover xECM PRD |  | 5d | 2026-04-14 | 2026-04-20 | 78, 77, 76 | 11d | 0d |
| 91 | 1.11.3 | Tareas de cutover IA PRD |  | 5d | 2026-04-14 | 2026-04-20 | 78, 77, 76 | 7d | 0d |
| 92 | 1.11.4 | Revisar agenda de key users para pruebas |  | 1d | 2025-12-19 | 2025-12-19 | 2 | 92d |  |
| 93 | 1.11.5 | **Pruebas de aceptación pre Go-Live** |  | 2d | 2026-04-21 | 2026-04-22 |  | 11d |  |
| 94 | 1.11.5.1 | Pruebas con key users CAT+IA |  | 2d | 2026-04-21 | 2026-04-22 | 90 | 14d |  |
| 95 | 1.11.5.2 | Pruebas con key users RRHH+IA |  | 2d | 2026-04-21 | 2026-04-22 | 90 | 14d |  |
| 96 | 1.11.6 | Revisar agenda de usuarios para capacitación |  | 1d | 2025-12-19 | 2025-12-19 | 2 | 92d |  |
| 97 | 1.11.7 | **Capacitación a usuarios** |  | 1d | 2026-04-21 | 2026-04-21 |  | 7d |  |
| 98 | 1.11.7.1 | Entrega de material de soporte (funcional) |  | 1d | 2026-04-21 | 2026-04-21 | 91 | 15d |  |
| 99 | 1.11.7.2 | Entrega de material de soporte (técnico) |  | 1d | 2026-04-21 | 2026-04-21 | 91 | 15d |  |
| 100 | 1.11.7.3 | Sesión de capacitación usuarios finales CAT |  | 1d | 2026-04-21 | 2026-04-21 | 91 | 15d |  |
| 101 | 1.11.7.4 | Sesión de capacitación usuarios finales RRHH |  | 1d | 2026-04-21 | 2026-04-21 | 91 | 15d |  |
| 102 | 1.11.7.5 | Sesión de capacitación IT |  | 1d | 2026-04-21 | 2026-04-21 | 91 | 7d | 0d |
| 103 | 1.12 | **Etapa de Lanzamiento** |  | 5d | 2026-04-22 | 2026-04-28 |  | 7d |  |
| 104 | 1.12.1 | Go Live BC+IA |  | 5d | 2026-04-22 | 2026-04-28 | 102 | 7d | 0d |
| 105 | 1.13 | H7 - Fin Etapa de Lanzamiento | milestone | 0d | 2026-04-28 | 2026-04-28 | 104 | 7d |  |

| ID | WBS | Task | Type | Duration | Start | Finish | Predecessors | Total slack | Free slack |
| --- | --- | --- | --- | --- | --- | --- | --- | --- | --- |
| 106 | 1.14 | **Etapa de Soporte y Mejoras** |  | 10d | 2026-04-24 | 2026-05-08 |  |  |  |
| 107 | 1.14.1 | Soporte Post-Go Live BC+IA |  | 10d | 2026-04-24 | 2026-05-08 |  | -0.12d | 0d |
| 108 | 1.15 | H8 - Fin Etapa de Soporte y Mejoras | milestone | 0d | 2026-05-08 | 2026-05-08 | 107 | 0d |  |
